Schedule from MS Project, 2018-09-03 to 2018-12-21, costs in R$, A marks actual dates.

## Calendars

- Padrão: Mon-Fri 09:00-12:00, 13:00-18:00; Sat-Sun off.

## Resources

| Resource | Rate |
| --- | --- |
| Kevin | 150 |
| Rodrigo | 150 |
| Cliente |  |
| Gp Externo | 200 |
| Mm |  |
| Adler | 300 |
| Lucas | 150 |
| Thiago | 150 |

## Schedule

| ID | WBS | Task | Type | Duration | Start | Finish | Predecessors | Complete | Remaining | Actual finish | Baseline start | Baseline finish | Baseline duration | Constraint | Resources | Work | Actual work | Cost | Baseline cost | Actual cost |
| --- | --- | --- | --- | --- | --- | --- | --- | --- | --- | --- | --- | --- | --- | --- | --- | --- | --- | --- | --- | --- |
| 1 | 1 | **Sistema de Integração de Serviços** |  | 79.53d | 2018-09-03 09:00 A | 2018-12-21 14:16 |  | 25% | 59.63d |  | 2018-09-03 09:00 | 2018-12-21 14:16 | 79.53d |  |  | 250.78h | 84.56h | 38,561.33 | 38,561.33 | 12,793.19 |
| 2 | 1.1 | **Prospecção** |  | 3d | 2018-09-03 09:00 A | 2018-09-05 18:00 |  | 100% |  | 2018-09-03 15:18 | 2018-09-03 09:00 | 2018-09-05 18:00 | 3d |  |  | 11.9h | 11.9h | 1,655 | 1,655 | 1,655 |
| 3 | 1.1.1 | **PTEC** |  | 1.09d | 2018-09-03 09:00 A | 2018-09-04 09:45 |  | 100% |  | 2018-09-03 14:00 | 2018-09-03 09:00 | 2018-09-04 09:45 | 1.09d |  |  | 7.5h | 7.5h | 1,125 | 1,125 | 1,125 |
| 4 | 1.1.1.1 | Estudar Dominio de Aplicação |  | 0.38d | 2018-09-03 09:00 A | 2018-09-03 12:00 A |  | 100% |  |  | 2018-09-03 09:00 | 2018-09-03 12:00 | 0.38d |  | Kevin | 3h | 3h | 450 | 450 | 450 |
| 5 | 1.1.1.2 | Reunir-se com o fornecedor de requisitos |  | 0.25d | 2018-09-03 09:00 A | 2018-09-03 14:00 A | 4 | 100% |  |  | 2018-09-03 09:00 | 2018-09-03 14:00 | 0.25d |  | Lucas | 2h | 2h | 300 | 300 | 300 |
| 6 | 1.1.1.3 | Redigir PTEC |  | 0.25d | 2018-09-03 09:00 A | 2018-09-03 11:00 A | 5 | 100% |  |  | 2018-09-03 09:00 | 2018-09-03 11:00 | 0.25d |  | Thiago | 2h | 2h | 300 | 300 | 300 |
| 7 | 1.1.1.4 | Revisar proposta Tecnica |  | 0.28d | 2018-09-03 09:00 A | 2018-09-03 11:15 A | 6 | 100% |  |  | 2018-09-03 09:00 | 2018-09-03 11:15 | 0.28d |  | Rodrigo | 0.5h | 0.5h | 75 | 75 | 75 |
| 8 | 1.1.1.5 | Aprovar PTEC | milestone | 0d | 2018-09-03 09:00 A | 2018-09-03 09:00 A | 7 | 100% |  |  | 2018-09-03 09:00 | 2018-09-03 09:00 | 0d |  | Cliente |  |  |  |  |  |
| 9 | 1.1.2 | **Es. Prel. Tam.** |  | 0.35d | 2018-09-03 09:00 A | 2018-09-03 11:48 |  | 100% |  | 2018-09-03 10:48 | 2018-09-03 09:00 | 2018-09-03 11:48 | 0.35d |  |  | 1.4h | 1.4h | 80 | 80 | 80 |
| 10 | 1.1.2.1 | Estimar tamanho do projeto |  | 0.12d | 2018-09-03 09:00 A | 2018-09-03 10:00 A | 7 | 100% |  |  | 2018-09-03 09:00 | 2018-09-03 10:00 | 0.12d |  | Thiago | 1h | 1h |  |  |  |
| 11 | 1.1.2.2 | Revisar estimativa de tamanho do projeto |  | 0.23d | 2018-09-03 09:00 A | 2018-09-03 10:48 A | 10 | 100% |  |  | 2018-09-03 09:00 | 2018-09-03 10:48 | 0.23d |  | Gp Externo | 0.4h | 0.4h | 80 | 80 | 80 |
| 12 | 1.1.3 | **Es. Prel. Cronograma e orçamento.** |  | 1d | 2018-09-03 09:00 A | 2018-09-03 18:00 |  | 100% |  | 2018-09-03 15:18 | 2018-09-03 09:00 | 2018-09-03 18:00 | 1d |  |  | 3h | 3h | 450 | 450 | 450 |
| 13 | 1.1.3.1 | Elaborar Cronograma e orçamento preliminares |  | 0.31d | 2018-09-03 09:00 A | 2018-09-03 15:18 A | 9 | 100% |  |  | 2018-09-03 09:00 | 2018-09-03 15:18 | 0.31d |  | Kevin | 2.5h | 2.5h | 375 | 375 | 375 |
| 14 | 1.1.3.2 | Revisar Cronograma e orçamento preliminares |  | 0.06d | 2018-09-03 09:00 A | 2018-09-03 09:30 A | 13, 10 | 100% |  |  | 2018-09-03 09:00 | 2018-09-03 09:30 | 0.06d |  | Lucas | 0.5h | 0.5h | 75 | 75 | 75 |
| 15 | 1.2 | **Análise** |  | 3d | 2018-09-04 09:00 A | 2018-09-06 18:00 |  | 100% |  | 2018-09-06 14:48 | 2018-09-04 09:00 | 2018-09-06 18:00 | 3d |  |  | 41h | 41h | 6,150 | 6,150 | 6,150 |
| 16 | 1.2.1 | **Documento de requisitos** |  | 2d | 2018-09-04 09:00 A | 2018-09-05 18:00 |  | 100% |  | 2018-09-06 14:48 | 2018-09-04 09:00 | 2018-09-05 18:00 | 2d |  |  | 26h | 26h | 3,900 | 3,900 | 3,900 |
| 17 | 1.2.1.1 | Reunir-se com o cliente |  | 0.38d | 2018-09-04 09:00 A | 2018-09-06 10:12 A | 14 | 100% |  |  | 2018-09-04 09:00 | 2018-09-06 10:12 | 0.38d |  | Rodrigo; Kevin; Lucas; Thiago | 6h | 6h | 900 | 900 | 900 |
| 18 | 1.2.1.2 | Elaborar DRE |  | 0.82d | 2018-09-04 09:00 A | 2018-09-06 13:36 A | 17 | 100% |  |  | 2018-09-04 09:00 | 2018-09-06 13:36 | 0.82d |  | Lucas; Kevin; Rodrigo; Thiago | 14h | 14h | 2,100 | 2,100 | 2,100 |
| 19 | 1.2.1.3 | Revisar DRE |  | 0.46d | 2018-09-04 09:00 A | 2018-09-06 14:48 A | 18 | 100% |  |  | 2018-09-04 09:00 | 2018-09-06 14:48 | 0.46d |  | Rodrigo; Kevin; Lucas; Thiago | 6h | 6h | 900 | 900 | 900 |
| 20 | 1.2.1.4 | Submeter DRE para aprovação do cliente | milestone | 0d | 2018-09-04 09:00 A | 2018-09-04 09:00 A | 19 | 100% |  |  | 2018-09-04 09:00 | 2018-09-04 09:00 | 0d |  | Kevin; Lucas; Thiago; Rodrigo |  |  |  |  |  |
| 21 | 1.2.2 | **Matriz de rastreabilidade Bidirecional** |  | 2d | 2018-09-05 09:00 A | 2018-09-06 18:00 |  | 100% |  | 2018-09-06 14:26 | 2018-09-05 09:00 | 2018-09-06 18:00 | 2d |  |  | 15h | 15h | 2,250 | 2,250 | 2,250 |
| 22 | 1.2.2.1 | Elaborar MRB |  | 0.62d | 2018-09-05 09:00 A | 2018-09-06 13:30 A | 20 | 100% |  |  | 2018-09-05 09:00 | 2018-09-06 13:30 | 0.62d | finish no earlier than 2018-09-05 18:00 | Kevin; Lucas; Rodrigo; Thiago | 12h | 12h | 1,800 | 1,800 | 1,800 |
| 23 | 1.2.2.2 | Revisar MRB |  | 0.18d | 2018-09-06 11:10 A | 2018-09-06 14:26 A | 22 | 100% |  |  | 2018-09-06 11:10 | 2018-09-06 14:26 | 0.18d | finish no earlier than 2018-09-05 18:00 | Rodrigo; Kevin; Lucas; Thiago | 3h | 3h | 450 | 450 | 450 |
| 24 | 1.3 | **Projeto** |  | 3.25d? | 2018-09-06 11:37 A | 2018-09-11 14:38 A |  | 100% |  |  | 2018-09-06 11:37 | 2018-09-11 14:38 | 3.25d? |  |  | 10.66h | 10.66h | 1,838.19 | 1,838.19 | 1,838.19 |
| 25 | 1.3.1 | **Diagrama de Classes** |  | 0.25d? | 2018-09-06 11:37 A | 2018-09-06 14:38 A |  | 100% |  |  | 2018-09-06 11:37 | 2018-09-06 14:38 | 0.25d? |  |  | 3.83h | 3.83h | 698.25 | 698.25 | 698.25 |
| 26 | 1.3.1.1 | Elaborar Diagrama de Classes |  | 0.05d? | 2018-09-06 11:37 A | 2018-09-06 13:02 A | 23 | 100% |  |  | 2018-09-06 11:37 | 2018-09-06 13:02 | 0.05d? |  | Lucas; Adler; Kevin; Rodrigo; Thiago | 2h | 2h | 360.75 | 360.75 | 360.75 |
| 27 | 1.3.1.2 | Revisar Diagrama de Classes |  | 0.03d? | 2018-09-06 14:13 A | 2018-09-06 14:28 A | 26 | 100% |  |  | 2018-09-06 14:13 | 2018-09-06 14:28 | 0.03d? |  | Kevin; Thiago; Lucas; Adler; Rodrigo | 1h | 1h | 187.5 | 187.5 | 187.5 |
| 28 | 1.3.1.3 | Atualizar MRB |  | 0.02d? | 2018-09-06 14:28 A | 2018-09-06 14:38 A | 27 | 100% |  |  | 2018-09-06 14:28 | 2018-09-06 14:38 | 0.02d? |  | Lucas; Rodrigo; Adler; Kevin; Thiago | 0.83h | 0.83h | 150 | 150 | 150 |

| ID | WBS | Task | Type | Duration | Start | Finish | Predecessors | Complete | Remaining | Actual start | Actual finish | Baseline start | Baseline finish | Baseline duration | Total slack | Free slack | Constraint | Resources | Work | Actual work | Cost | Baseline cost | Actual cost |
| --- | --- | --- | --- | --- | --- | --- | --- | --- | --- | --- | --- | --- | --- | --- | --- | --- | --- | --- | --- | --- | --- | --- | --- |
| 29 | 1.3.2 | **Modelo Entidade Relacionamento** |  | 0.15d? | 2018-09-06 14:38 A | 2018-09-06 15:51 A |  | 100% |  |  |  | 2018-09-06 14:38 | 2018-09-06 15:51 | 0.15d? |  |  |  |  | 3.83h | 3.83h | 690 | 690 | 690 |
| 30 | 1.3.2.1 | Elaborar MER |  | 0.07d? | 2018-09-06 14:38 A | 2018-09-06 15:14 A | 28 | 100% |  |  |  | 2018-09-06 14:38 | 2018-09-06 15:14 | 0.07d? |  |  |  | Rodrigo; Lucas; Adler; Kevin; Thiago | 3h | 3h | 540 | 540 | 540 |
| 31 | 1.3.2.2 | Revisar MER |  | 0.02d? | 2018-09-06 15:38 A | 2018-09-06 15:51 A | 30 | 100% |  |  |  | 2018-09-06 15:38 | 2018-09-06 15:51 | 0.02d? |  |  |  | Lucas; Rodrigo; Adler; Kevin; Thiago | 0.83h | 0.83h | 150 | 150 | 150 |
| 32 | 1.3.3 | Elaborar Plano de Teste | manual | 1.42d | 2018-09-06 14:38 A | 2018-09-10 09:00 A | 28 | 100% |  |  |  | 2018-09-06 14:38 | 2018-09-10 09:00 | 1.42d |  |  |  | Kevin; Lucas; Rodrigo; Thiago | 1h | 1h | 150 | 150 | 150 |
| 33 | 1.3.4 | Revisar Plano de Teste | manual | 0.47d | 2018-09-07 14:38 A | 2018-09-10 09:23 A | 32 | 100% |  |  |  | 2018-09-07 14:38 | 2018-09-10 09:23 | 0.47d |  |  |  | Kevin; Lucas; Rodrigo; Thiago | 1h | 1h | 149.94 | 149.94 | 149.94 |
| 34 | 1.3.5 | Gerar Status Report | manual | 1d | 2018-09-10 14:38 A | 2018-09-11 14:38 A | 33 | 100% |  |  |  | 2018-09-10 14:38 | 2018-09-11 14:38 | 1d |  |  |  | Kevin; Lucas; Rodrigo; Thiago | 1h | 1h | 150 | 150 | 150 |
| 35 | 1.4 | **Planejamento** |  | 2d | 2018-09-06 09:00 A | 2018-09-07 18:00 A |  | 100% |  |  |  | 2018-09-06 09:00 | 2018-09-07 18:00 | 2d |  |  |  |  | 16.5h | 16.5h | 2,475 | 2,475 | 2,475 |
| 36 | 1.4.1 | **Estimativa de Tamanho Definitivo** |  | 1d | 2018-09-06 09:00 A | 2018-09-06 18:00 |  | 100% |  |  | 2018-09-06 16:23 | 2018-09-06 09:00 | 2018-09-06 18:00 | 1d |  |  |  |  | 4.33h | 4.33h | 650 | 650 | 650 |
| 37 | 1.4.1.1 | Elaborar Estimativa de Tamanho Definitiva |  | 0.17d? | 2018-09-06 09:00 A | 2018-09-06 16:23 A | 31 | 100% |  |  |  | 2018-09-06 09:00 | 2018-09-06 16:23 | 0.17d? |  |  |  | Kevin; Lucas; Rodrigo | 4h | 4h | 600 | 600 | 600 |
| 38 | 1.4.1.2 | Revisar Estimativa de Tamanho Definitiva |  | 0.04d? | 2018-09-06 09:00 A | 2018-09-06 09:20 A | 37 | 100% |  |  |  | 2018-09-06 09:00 | 2018-09-06 09:20 | 0.04d? |  |  |  | Lucas | 0.33h | 0.33h | 50 | 50 | 50 |
| 39 | 1.4.2 | **Cronograma Definitivo** |  | 0.4d? | 2018-09-06 09:00 A | 2018-09-06 13:12 |  | 100% |  |  | 2018-09-06 11:20 | 2018-09-06 09:00 | 2018-09-06 13:12 | 0.4d? |  |  |  |  | 9h | 9h | 1,350 | 1,350 | 1,350 |
| 40 | 1.4.2.1 | Elabora Cronograma Definitivo |  | 0.29d? | 2018-09-06 09:00 A | 2018-09-06 11:20 A | 38 | 100% |  |  |  | 2018-09-06 09:00 | 2018-09-06 11:20 | 0.29d? |  |  |  | Kevin; Lucas; Rodrigo | 7h | 7h | 1,050 | 1,050 | 1,050 |
| 41 | 1.4.2.2 | Revisar Cronograma Definitivo |  | 0.12d? | 2018-09-06 09:00 A | 2018-09-06 10:00 A | 40 | 100% |  |  |  | 2018-09-06 09:00 | 2018-09-06 10:00 | 0.12d? |  |  |  | Kevin; Rodrigo | 2h | 2h | 300 | 300 | 300 |
| 42 | 1.4.3 | **Estimativa de Custo Definitiva** |  | 0.12d | 2018-09-06 09:00 A | 2018-09-06 10:00 |  | 100% |  |  | 2018-09-07 18:00 | 2018-09-06 09:00 | 2018-09-06 10:00 | 0.12d |  |  |  |  | 3.17h | 3.17h | 475 | 475 | 475 |
| 43 | 1.4.3.1 | Elaborar Estimativa de Custo Definitiva |  | 0.08d? | 2018-09-06 09:00 A | 2018-09-06 10:16 A | 41 | 100% |  |  |  | 2018-09-06 09:00 | 2018-09-06 10:16 | 0.08d? |  |  |  | Kevin; Lucas; Rodrigo | 2h | 2h | 300 | 300 | 300 |
| 44 | 1.4.3.2 | Revisar Estimativa de Custo Definitiva |  | 0.02d? | 2018-09-06 09:00 A | 2018-09-06 09:10 A | 43 | 100% |  |  |  | 2018-09-06 09:00 | 2018-09-06 09:10 | 0.02d? |  |  |  | Lucas; Thiago | 0.17h | 0.17h | 25 | 25 | 25 |
| 45 | 1.4.3.3 | Submeter Estimativa de Custo e Tamanho para aprovação do cliente | milestone | 0d? | 2018-09-06 09:00 A | 2018-09-06 09:00 A | 44 | 100% |  |  |  | 2018-09-06 09:00 | 2018-09-06 09:00 | 0d? |  |  |  | Kevin; Thiago |  |  |  |  |  |
| 46 | 1.4.3.4 | Gerar Status Report | manual | 2d | 2018-09-06 09:00 A | 2018-09-07 18:00 A | 45 | 100% |  |  |  | 2018-09-06 09:00 | 2018-09-07 18:00 | 2d |  |  |  | Kevin; Lucas; Rodrigo; Thiago | 1h | 1h | 150 | 150 | 150 |
| 47 | 1.5 | **Implementação** |  | 73.98d? | 2018-09-07 09:00 A | 2018-12-19 17:51 |  |  | 73.72d? |  |  | 2018-09-07 09:00 | 2018-12-19 17:51 | 73.98d? | 0d |  |  |  | 139.25h | 4.5h | 20,887.15 | 20,887.15 | 675 |
| 48 | 1.5.1 | **Release 01** |  | 43.3d? | 2018-09-07 09:00 A | 2018-11-07 11:24 |  | 6% | 40.76d? |  |  | 2018-09-07 09:00 | 2018-11-07 11:24 | 43.3d? | 4.41d |  |  |  | 37h | 4.5h | 5,550 | 5,550 | 675 |
| 49 | 1.5.1.1 | **Implementação** |  | 41.24d | 2018-09-07 09:00 | 2018-11-05 10:53 |  | 8% | 37.82d | 2018-11-02 09:00 |  | 2018-09-07 09:00 | 2018-11-05 10:53 | 41.24d |  |  |  |  | 27h | 4.5h | 4,050 | 4,050 | 675 |
| 50 | 1.5.1.1.1 | **[RFC01] Manter Pefil de Cliente e Profissional** |  | 0.95d | 2018-11-02 09:00 | 2018-11-02 17:36 |  |  |  |  |  | 2018-11-02 09:00 | 2018-11-02 17:36 | 0.95d |  |  |  |  | 17h |  | 2,550 | 2,550 |  |
| 51 | 1.5.1.1.1.1 | [RFS01] Cadastrar Usuário |  | 0.22d? | 2018-11-02 09:00 | 2018-11-02 10:44 | 45 |  |  |  |  | 2018-11-02 09:00 | 2018-11-02 10:44 | 0.22d? | 0.06d | 0d | start no earlier than 2018-11-02 09:00 | Kevin; Lucas; Rodrigo; Thiago | 5h |  | 750 | 750 |  |
| 52 | 1.5.1.1.1.2 | [RFS02] Alterar Dados do Perfil de Cliente |  | 0.12d? | 2018-11-02 10:44 | 2018-11-02 11:44 | 51 |  |  |  |  | 2018-11-02 10:44 | 2018-11-02 11:44 | 0.12d? | 0.06d | 0d | start no earlier than 2018-09-07 09:00 | Kevin; Lucas; Rodrigo; Thiago | 3h |  | 450 | 450 |  |
| 53 | 1.5.1.1.1.3 | [RFS03] Requisição de perfil profissional |  | 0.22d? | 2018-11-02 11:44 | 2018-11-02 14:44 | 52 |  |  |  |  | 2018-11-02 11:44 | 2018-11-02 14:44 | 0.22d? | 0.06d | 0d | start no earlier than 2018-09-07 09:00 | Kevin; Lucas; Rodrigo; Thiago | 3h |  | 450 | 450 |  |
| 54 | 1.5.1.1.1.4 | [RFS04] Lista de requisições para perfil profissional |  | 0.23d? | 2018-11-02 14:44 | 2018-11-02 16:36 | 53 |  |  |  |  | 2018-11-02 14:44 | 2018-11-02 16:36 | 0.23d? | 0.06d | 0d | start no earlier than 2018-09-07 09:00 | Rodrigo; Kevin; Lucas; Thiago | 3h |  | 450 | 450 |  |
| 55 | 1.5.1.1.1.5 | [RFS05] Análise de requisição de perfil profissional |  | 0.12d? | 2018-11-02 16:36 | 2018-11-02 17:36 | 54 |  |  |  |  | 2018-11-02 16:36 | 2018-11-02 17:36 | 0.12d? | 0.06d | 0.05d | start no earlier than 2018-09-07 09:00 | Kevin; Lucas; Rodrigo; Thiago | 3h |  | 450 | 450 |  |

| ID | WBS | Task | Type | Duration | Start | Finish | Predecessors | Complete | Remaining | Baseline start | Baseline finish | Baseline duration | Total slack | Free slack | Constraint | Resources | Work | Actual work | Cost | Baseline cost | Actual cost |
| --- | --- | --- | --- | --- | --- | --- | --- | --- | --- | --- | --- | --- | --- | --- | --- | --- | --- | --- | --- | --- | --- |
| 56 | 1.5.1.1.2 | **[RFC07] Manter Login** |  | 0.24d? | 2018-11-05 09:00 A | 2018-11-05 10:53 |  | 37% | 0.15d? | 2018-11-05 09:00 | 2018-11-05 10:53 | 0.24d? | 5.96d |  |  |  | 10h | 4.5h | 1,500 | 1,500 | 675 |
| 57 | 1.5.1.1.2.1 | [RFS023] Cadastrar Login | manual | 0.03d | 2018-11-05 09:00 A | 2018-11-05 09:12 | 55 | 50% | 0.01d | 2018-11-05 09:00 | 2018-11-05 09:12 | 0.03d |  |  |  | Kevin; Lucas; Rodrigo; Thiago | 4h | 2h | 600 | 600 | 300 |
| 58 | 1.5.1.1.2.2 | [RFS024] Consultar Login | manual | 0.03d | 2018-11-05 09:00 A | 2018-11-05 09:12 | 57 | 50% | 0.01d | 2018-11-05 09:00 | 2018-11-05 09:12 | 0.03d |  |  |  | Kevin; Lucas; Rodrigo; Thiago | 2h | 1h | 300 | 300 | 150 |
| 59 | 1.5.1.1.2.3 | [RFS025] Alterar Login |  | 0.09d? | 2018-11-05 09:12 A | 2018-11-05 09:54 | 58 | 47% | 0.05d? | 2018-11-05 09:12 | 2018-11-05 09:54 | 0.09d? | 0.03d | 0d | start no earlier than 2018-11-05 09:00 | Kevin; Lucas; Rodrigo; Thiago | 2h | 1h | 300 | 300 | 150 |
| 60 | 1.5.1.1.2.4 | [RFS026] Cancelar Login |  | 0.12d? | 2018-11-05 09:53 A | 2018-11-05 10:53 | 59 | 25% | 0.09d? | 2018-11-05 09:53 | 2018-11-05 10:53 | 0.12d? | 5.96d | 0.76d | start no earlier than 2018-11-05 09:00 | Kevin; Lucas; Rodrigo; Thiago | 2h | 0.5h | 300 | 300 | 75 |
| 61 | 1.5.1.2 | **Teste Release 01** |  | 1.24d? | 2018-11-06 09:00 | 2018-11-07 10:55 |  |  |  | 2018-11-06 09:00 | 2018-11-07 10:55 | 1.24d? | 0d |  |  |  | 9h |  | 1,350 | 1,350 |  |
| 62 | 1.5.1.2.1 | **[RFC01] Manter Perfil de Cliente e Profissional** |  | 0.19d? | 2018-11-06 09:00 | 2018-11-06 10:29 |  |  |  | 2018-11-06 09:00 | 2018-11-06 10:29 | 0.19d? | 0d |  |  |  | 5h |  | 750 | 750 |  |
| 63 | 1.5.1.2.1.1 | [RFS01] Cadastrar Usuário | manual | 0.03d | 2018-11-06 09:00 | 2018-11-06 09:14 | 60 |  |  | 2018-11-06 09:00 | 2018-11-06 09:14 | 0.03d |  |  |  | Kevin; Lucas; Rodrigo; Thiago | 1h |  | 150 | 150 |  |
| 64 | 1.5.1.2.1.2 | [RFS02] Alterar Dados do Perfil de Cliente |  | 0.03d? | 2018-11-06 09:14 | 2018-11-06 09:29 | 63 |  |  | 2018-11-06 09:14 | 2018-11-06 09:29 | 0.03d? | 5.19d | 0d | start no earlier than 2018-11-06 09:00 | Kevin; Lucas; Rodrigo; Thiago | 1h |  | 150 | 150 |  |
| 65 | 1.5.1.2.1.3 | [RFS03] Requisição de perfil profissional |  | 0.06d | 2018-11-06 09:29 | 2018-11-06 09:58 | 64 |  |  | 2018-11-06 09:29 | 2018-11-06 09:58 | 0.06d | 5.19d | 0d | start no earlier than 2018-11-06 09:00 | Kevin; Lucas; Rodrigo; Thiago | 1h |  | 150 | 150 |  |
| 66 | 1.5.1.2.1.4 | [RFS04] Lista de requisições para perfil profissional |  | 0.03d | 2018-11-06 09:58 | 2018-11-06 10:13 | 65 |  |  | 2018-11-06 09:58 | 2018-11-06 10:13 | 0.03d | 5.19d | 0d | start no earlier than 2018-11-06 09:00 | Kevin; Lucas; Rodrigo; Thiago | 1h |  | 150 | 150 |  |
| 67 | 1.5.1.2.1.5 | [RFS05] Análise de requisição de perfil profissional |  | 0.03d? | 2018-11-06 10:13 | 2018-11-06 10:29 | 66 |  |  | 2018-11-06 10:13 | 2018-11-06 10:29 | 0.03d? | 5.19d | 0.81d | start no earlier than 2018-11-06 09:00 | Kevin; Lucas; Rodrigo; Thiago | 1h |  | 150 | 150 |  |
| 68 | 1.5.1.2.2 | **[RFC07] Manter Login** |  | 0.24d | 2018-11-07 09:00 | 2018-11-07 10:55 |  |  |  | 2018-11-07 09:00 | 2018-11-07 10:55 | 0.24d | 0d |  |  |  | 4h |  | 600 | 600 |  |
| 69 | 1.5.1.2.2.1 | [RFS023] Cadastrar Login | manual | 0.06d | 2018-11-07 09:00 | 2018-11-07 09:28 | 67 |  |  | 2018-11-07 09:00 | 2018-11-07 09:28 | 0.06d |  |  |  | Kevin; Lucas; Rodrigo; Thiago | 1h |  | 150 | 150 |  |
| 70 | 1.5.1.2.2.2 | [RFS024] Consultar Login | manual | 0.06d | 2018-11-07 09:28 | 2018-11-07 09:57 | 69 |  |  | 2018-11-07 09:28 | 2018-11-07 09:57 | 0.06d |  |  |  | Kevin; Lucas; Rodrigo; Thiago | 1h |  | 150 | 150 |  |
| 71 | 1.5.1.2.2.3 | [RFS025] Alterar Login | manual | 0.06d | 2018-11-07 09:57 | 2018-11-07 10:26 | 70 |  |  | 2018-11-07 09:57 | 2018-11-07 10:26 | 0.06d |  |  |  | Kevin; Lucas; Rodrigo; Thiago | 1h |  | 150 | 150 |  |
| 72 | 1.5.1.2.2.4 | [RFS026] Cancelar Login | manual | 0.06d | 2018-11-07 10:26 | 2018-11-07 10:55 | 71 |  |  | 2018-11-07 10:26 | 2018-11-07 10:55 | 0.06d |  |  |  | Kevin; Lucas; Rodrigo; Thiago | 1h |  | 150 | 150 |  |
| 73 | 1.5.1.3 | Gerar Status Report |  | 0.06d | 2018-11-07 10:55 | 2018-11-07 11:24 | 72 |  |  | 2018-11-07 10:55 | 2018-11-07 11:24 | 0.06d | 4.41d | 0.7d |  | Kevin; Lucas; Rodrigo; Thiago | 1h |  | 150 | 150 |  |
| 74 | 1.5.2 | **Release 02** |  | 48.08d? | 2018-09-11 09:00 | 2018-11-16 09:40 |  |  |  | 2018-09-11 09:00 | 2018-11-16 09:40 | 48.08d? | 0d |  |  |  | 30.23h |  | 4,534.59 | 4,534.59 |  |
| 75 | 1.5.2.1 | **Implementação** |  | 4.12d | 2018-11-08 09:00 | 2018-11-14 09:55 |  |  |  | 2018-11-08 09:00 | 2018-11-14 09:55 | 4.12d | 0d |  |  |  | 21h |  | 3,150 | 3,150 |  |
| 76 | 1.5.2.1.1 | **[RFC03] Manter Serviço** |  | 3.88d | 2018-11-08 09:00 | 2018-11-13 17:00 |  |  |  | 2018-11-08 09:00 | 2018-11-13 17:00 | 3.88d | 0d |  |  |  | 12h |  | 1,800 | 1,800 |  |
| 77 | 1.5.2.1.1.1 | [RFS10] Solicitar Serviço | manual | 1d? | 2018-11-08 09:00 | 2018-11-08 18:00 | 73 |  |  | 2018-11-08 09:00 | 2018-11-08 18:00 | 1d? |  |  |  | Kevin; Lucas; Rodrigo; Thiago | 6h |  | 900 | 900 |  |
| 78 | 1.5.2.1.1.2 | [RFS11] Alterar Serviço | manual | 1d? | 2018-11-09 08:00 | 2018-11-09 17:00 | 77 |  |  | 2018-11-09 08:00 | 2018-11-09 17:00 | 1d? |  |  |  | Kevin; Lucas; Rodrigo; Thiago | 2h |  | 300 | 300 |  |
| 79 | 1.5.2.1.1.3 | [RFS12] Pesquisar Serviço | manual | 1d? | 2018-11-09 17:00 | 2018-11-12 17:00 | 78 |  |  | 2018-11-09 17:00 | 2018-11-12 17:00 | 1d? |  |  |  | Kevin; Lucas; Rodrigo; Thiago | 2h |  | 300 | 300 |  |
| 80 | 1.5.2.1.1.4 | [RFS13] Cancelar Serviço | manual | 1d? | 2018-11-12 17:00 | 2018-11-13 17:00 | 79 |  |  | 2018-11-12 17:00 | 2018-11-13 17:00 | 1d? |  |  |  | Kevin; Lucas; Rodrigo; Thiago | 2h |  | 300 | 300 |  |

| ID | WBS | Task | Type | Duration | Start | Finish | Predecessors | Baseline start | Baseline finish | Baseline duration | Total slack | Free slack | Resources | Work | Cost | Baseline cost |
| --- | --- | --- | --- | --- | --- | --- | --- | --- | --- | --- | --- | --- | --- | --- | --- | --- |
| 81 | 1.5.2.1.2 | **[RFC02] Manter Serviço Prestados no Calendário** |  | 0.24d | 2018-11-13 17:00 | 2018-11-14 09:55 |  | 2018-11-13 17:00 | 2018-11-14 09:55 | 0.24d | 0d |  |  | 9h | 1,350 | 1,350 |
| 82 | 1.5.2.1.2.1 | [RFS06] Cadastrar Serviço Prestados no Calendário | manual | 0.06d | 2018-11-13 17:00 | 2018-11-13 17:28 | 80 | 2018-11-13 17:00 | 2018-11-13 17:28 | 0.06d |  |  | Kevin; Lucas; Rodrigo; Thiago | 6h | 900 | 900 |
| 83 | 1.5.2.1.2.2 | [RFS07] Consultar Serviço Prestados no Calendário | manual | 0.06d | 2018-11-13 17:28 | 2018-11-13 17:57 | 82 | 2018-11-13 17:28 | 2018-11-13 17:57 | 0.06d |  |  | Kevin; Lucas; Rodrigo; Thiago | 1h | 150 | 150 |
| 84 | 1.5.2.1.2.3 | [RFS08] Alterar Cadastro de Serviço Prestados no Calendário | manual | 0.06d | 2018-11-13 17:57 | 2018-11-14 09:26 | 83 | 2018-11-13 17:57 | 2018-11-14 09:26 | 0.06d |  |  | Kevin; Lucas; Rodrigo; Thiago | 1h | 150 | 150 |
| 85 | 1.5.2.1.2.4 | [RFS09] Alterar Cadastro de Serviço no Calendário | manual | 0.06d | 2018-11-14 09:26 | 2018-11-14 09:55 | 84 | 2018-11-14 09:26 | 2018-11-14 09:55 | 0.06d |  |  | Kevin; Lucas; Rodrigo; Thiago | 1h | 150 | 150 |
| 86 | 1.5.2.2 | **Teste Release 02** |  | 2d | 2018-09-11 09:00 | 2018-09-12 18:00 |  | 2018-09-11 09:00 | 2018-09-12 18:00 | 2d |  |  |  | 8.23h | 1,234.59 | 1,234.59 |
| 87 | 1.5.2.2.1 | **[RFC03] Manter Serviço** |  | 1.76d? | 2018-11-14 09:55 | 2018-11-15 17:00 |  | 2018-11-14 09:55 | 2018-11-15 17:00 | 1.76d? | 0d |  |  | 3.23h | 484.59 | 484.59 |
| 88 | 1.5.2.2.1.1 | [RFS10] Solicitar Serviço | manual | 0.5d | 2018-11-14 09:55 | 2018-11-14 14:55 | 85 | 2018-11-14 09:55 | 2018-11-14 14:55 | 0.5d |  |  | Kevin; Lucas; Rodrigo; Thiago | 1h | 150 | 150 |
| 89 | 1.5.2.2.1.2 | [RFS11] Alterar Serviço | manual | 0.18d | 2018-11-14 16:31 | 2018-11-14 18:00 | 88 | 2018-11-14 16:31 | 2018-11-14 18:00 | 0.18d |  |  | Kevin; Lucas; Rodrigo; Thiago | 0.35h | 52.24 | 52.24 |
| 90 | 1.5.2.2.1.3 | [RFS12] Pesquisar Serviço | manual | 0.5d | 2018-11-15 08:00 | 2018-11-15 12:00 | 89 | 2018-11-15 08:00 | 2018-11-15 12:00 | 0.5d |  |  | Kevin; Lucas; Rodrigo; Thiago | 0.94h | 141.18 | 141.18 |
| 91 | 1.5.2.2.1.4 | [RFS13] Cancelar Serviço | manual | 0.5d | 2018-11-15 13:00 | 2018-11-15 17:00 | 90 | 2018-11-15 13:00 | 2018-11-15 17:00 | 0.5d |  |  | Kevin; Lucas; Rodrigo; Thiago | 0.94h | 141.18 | 141.18 |
| 92 | 1.5.2.2.2 | **[RFC02] Manter Serviço Prestados no Calendário** |  | 0.21d? | 2018-11-15 17:00 | 2018-11-16 09:40 |  | 2018-11-15 17:00 | 2018-11-16 09:40 | 0.21d? | 3.76d |  |  | 5h | 750 | 750 |
| 93 | 1.5.2.2.2.1 | [RFS06] Cadastrar Serviço Prestados no Calendário |  | 0.08d? | 2018-11-15 17:00 | 2018-11-15 17:40 | 91 | 2018-11-15 17:00 | 2018-11-15 17:40 | 0.08d? | 3.76d | 0d | Kevin; Lucas; Rodrigo; Thiago | 2h | 300 | 300 |
| 94 | 1.5.2.2.2.2 | [RFS07] Consultar Serviço Prestados no Calendário |  | 0.04d? | 2018-11-15 17:40 | 2018-11-15 18:00 | 93 | 2018-11-15 17:40 | 2018-11-15 18:00 | 0.04d? | 3.76d | 0d | Kevin; Lucas; Rodrigo; Thiago | 1h | 150 | 150 |
| 95 | 1.5.2.2.2.3 | [RFS08] Alterar Cadastro de Serviço Prestados no Calendário |  | 0.08d? | 2018-11-15 18:00 | 2018-11-16 09:20 | 94 | 2018-11-15 18:00 | 2018-11-16 09:20 | 0.08d? | 3.76d | 0d | Rodrigo; Lucas; Kevin; Thiago | 1h | 150 | 150 |
| 96 | 1.5.2.2.2.4 | [RFS09] Alterar Cadastro de Serviço no Calendário |  | 0.04d? | 2018-11-16 09:20 | 2018-11-16 09:40 | 95 | 2018-11-16 09:20 | 2018-11-16 09:40 | 0.04d? | 3.76d | 0d | Rodrigo; Lucas; Kevin; Thiago | 1h | 150 | 150 |
| 97 | 1.5.2.3 | Gerar Status Report | manual | 0.03d | 2018-11-15 17:44 | 2018-11-15 18:00 | 96 | 2018-11-15 17:44 | 2018-11-15 18:00 | 0.03d |  |  | Kevin; Lucas; Rodrigo; Thiago | 1h | 150 | 150 |
| 98 | 1.5.3 | **Release 03** |  | 57.53d | 2018-09-12 09:00 | 2018-11-30 14:16 |  | 2018-09-12 09:00 | 2018-11-30 14:16 | 57.53d |  |  |  | 34h | 5,099.75 | 5,099.75 |
| 99 | 1.5.3.1 | **Implementação** |  | 3d | 2018-09-12 09:00 | 2018-09-14 18:00 |  | 2018-09-12 09:00 | 2018-09-14 18:00 | 3d |  |  |  | 24h | 3,600 | 3,600 |
| 100 | 1.5.3.1.1 | **[RFC06] Manter Album** |  | 0.23d? | 2018-09-12 09:00 | 2018-09-12 10:48 |  | 2018-09-12 09:00 | 2018-09-12 10:48 | 0.23d? |  |  |  | 12h | 1,800 | 1,800 |
| 101 | 1.5.3.1.1.1 | [RFS19] Cadastrar Foto no Album |  | 0.25d? | 2018-11-16 09:40 | 2018-11-16 11:40 | 96 | 2018-11-16 09:40 | 2018-11-16 11:40 | 0.25d? | 3.76d | 0d | Rodrigo; Lucas; Kevin; Thiago | 6h | 900 | 900 |
| 102 | 1.5.3.1.1.2 | [RFS20] Alterar Foto no Album |  | 0.12d? | 2018-11-16 11:40 | 2018-11-16 14:20 | 101 | 2018-11-16 11:40 | 2018-11-16 14:20 | 0.12d? | 3.64d | 0d | Kevin; Lucas; Rodrigo; Thiago | 2h | 300 | 300 |
| 103 | 1.5.3.1.1.3 | [RFS21] Consultar Foto no Album |  | 0.08d? | 2018-11-16 14:20 | 2018-11-16 15:00 | 102 | 2018-11-16 14:20 | 2018-11-16 15:00 | 0.08d? | 3.64d | 0d | Lucas; Kevin; Rodrigo; Thiago | 2h | 300 | 300 |
| 104 | 1.5.3.1.1.4 | [RFS22] Remover Foto no Album |  | 0.08d? | 2018-11-16 15:00 | 2018-11-16 15:40 | 103 | 2018-11-16 15:00 | 2018-11-16 15:40 | 0.08d? | 3.64d | 0.18d | Lucas; Kevin; Rodrigo; Thiago | 2h | 300 | 300 |

| ID | WBS | Task | Type | Duration | Start | Finish | Predecessors | Baseline start | Baseline finish | Baseline duration | Total slack | Free slack | Constraint | Resources | Work | Cost | Baseline cost |
| --- | --- | --- | --- | --- | --- | --- | --- | --- | --- | --- | --- | --- | --- | --- | --- | --- | --- |
| 105 | 1.5.3.1.2 | **[RFC08] CRUD Rodrigo** |  | 4d | 2018-11-16 17:04 | 2018-11-22 17:04 |  | 2018-11-16 17:04 | 2018-11-22 17:04 | 4d | 0d |  |  |  | 12h | 1,800 | 1,800 |
| 106 | 1.5.3.1.2.1 | [RFS10] Solicitar Serviço | manual | 1d? | 2018-11-16 17:04 | 2018-11-19 17:04 | 104 | 2018-11-16 17:04 | 2018-11-19 17:04 | 1d? |  |  |  | Kevin; Lucas; Rodrigo; Thiago | 6h | 900 | 900 |
| 107 | 1.5.3.1.2.2 | [RFS11] Alterar Serviço | manual | 1d? | 2018-11-19 17:04 | 2018-11-20 17:04 | 106 | 2018-11-19 17:04 | 2018-11-20 17:04 | 1d? |  |  |  | Kevin; Lucas; Rodrigo; Thiago | 2h | 300 | 300 |
| 108 | 1.5.3.1.2.3 | [RFS12] Pesquisar Serviço | manual | 1d? | 2018-11-20 17:04 | 2018-11-21 17:04 | 107 | 2018-11-20 17:04 | 2018-11-21 17:04 | 1d? |  |  |  | Kevin; Lucas; Rodrigo; Thiago | 2h | 300 | 300 |
| 109 | 1.5.3.1.2.4 | [RFS13] Cancelar Serviço | manual | 1d? | 2018-11-21 17:04 | 2018-11-22 17:04 | 108 | 2018-11-21 17:04 | 2018-11-22 17:04 | 1d? |  |  |  | Kevin; Lucas; Rodrigo; Thiago | 2h | 300 | 300 |
| 110 | 1.5.3.2 | **Teste Release 03** |  | 2d | 2018-09-13 09:00 | 2018-09-14 18:00 |  | 2018-09-13 09:00 | 2018-09-14 18:00 | 2d |  |  |  |  | 9h | 1,349.75 | 1,349.75 |
| 111 | 1.5.3.2.1 | **[RFC06] Manter Album** |  | 2d | 2018-09-13 09:00 | 2018-09-14 18:00 |  | 2018-09-13 09:00 | 2018-09-14 18:00 | 2d |  |  |  |  | 4h | 599.75 | 599.75 |
| 112 | 1.5.3.2.1.1 | [RFS19] Cadastrar Foto no Album |  | 0.06d? | 2018-11-22 17:04 | 2018-11-23 08:24 | 109 | 2018-11-22 17:04 | 2018-11-23 08:24 | 0.06d? | 3.46d | 0d |  | Rodrigo; Lucas; Kevin; Thiago | 1h | 149.99 | 149.99 |
| 113 | 1.5.3.2.1.2 | [RFS20] Alterar Foto no Album |  | 0.08d? | 2018-11-23 08:24 | 2018-11-23 09:26 | 112 | 2018-11-23 08:24 | 2018-11-23 09:26 | 0.08d? | 3.63d | 0d |  | Kevin; Lucas; Rodrigo; Thiago | 1h | 149.75 | 149.75 |
| 114 | 1.5.3.2.1.3 | [RFS21] Consultar Foto no Album |  | 0.04d? | 2018-11-23 09:26 | 2018-11-23 09:47 | 113 | 2018-11-23 09:26 | 2018-11-23 09:47 | 0.04d? | 3.63d | 0d |  | Lucas; Kevin; Rodrigo; Thiago | 1h | 150 | 150 |
| 115 | 1.5.3.2.1.4 | [RFS22] Remover Foto no Album |  | 0.04d? | 2018-11-23 09:47 | 2018-11-23 10:08 | 114 | 2018-11-23 09:47 | 2018-11-23 10:08 | 0.04d? | 3.63d | 0.39d |  | Lucas; Kevin; Rodrigo; Thiago | 1h | 150 | 150 |
| 116 | 1.5.3.2.2 | **[RFC08] Manter perfil de Administrador** |  | 4d | 2018-11-23 14:16 | 2018-11-29 14:16 |  | 2018-11-23 14:16 | 2018-11-29 14:16 | 4d | 0d |  |  |  | 5h | 750 | 750 |
| 117 | 1.5.3.2.2.1 | [RFS27] Cadastro de perfil Administrador | manual | 1d? | 2018-11-23 14:16 | 2018-11-26 14:16 | 115 | 2018-11-23 14:16 | 2018-11-26 14:16 | 1d? |  |  |  | Kevin; Lucas; Rodrigo; Thiago | 2h | 300 | 300 |
| 118 | 1.5.3.2.2.2 | [RFS28] Alterar dados de perfil Administrador | manual | 1d? | 2018-11-26 14:16 | 2018-11-27 14:16 | 117 | 2018-11-26 14:16 | 2018-11-27 14:16 | 1d? |  |  |  | Kevin; Lucas; Rodrigo; Thiago | 1h | 150 | 150 |
| 119 | 1.5.3.2.2.3 | [RFS29] Pesquisar Administradores | manual | 1d? | 2018-11-27 14:16 | 2018-11-28 14:16 | 118 | 2018-11-27 14:16 | 2018-11-28 14:16 | 1d? |  |  |  | Kevin; Lucas; Rodrigo; Thiago | 1h | 150 | 150 |
| 120 | 1.5.3.2.2.4 | [RFS30] Desativar Administradores | manual | 1d? | 2018-11-28 14:16 | 2018-11-29 14:16 | 119 | 2018-11-28 14:16 | 2018-11-29 14:16 | 1d? |  |  |  | Kevin; Lucas; Rodrigo; Thiago | 1h | 150 | 150 |
| 121 | 1.5.3.3 | Gerar Status Report | manual | 1d? | 2018-11-29 14:16 | 2018-11-30 14:16 | 120 | 2018-11-29 14:16 | 2018-11-30 14:16 | 1d? |  |  |  | Kevin; Lucas; Rodrigo; Thiago | 1h | 150 | 150 |
| 122 | 1.5.4 | **Release 04** |  | 68.98d | 2018-09-14 09:00 | 2018-12-19 17:51 |  | 2018-09-14 09:00 | 2018-12-19 17:51 | 68.98d |  |  |  |  | 38.02h | 5,702.81 | 5,702.81 |
| 123 | 1.5.4.1 | **Implementação** |  | 62.31d | 2018-09-14 09:00 | 2018-12-11 11:31 |  | 2018-09-14 09:00 | 2018-12-11 11:31 | 62.31d |  |  |  |  | 29.02h | 4,352.81 | 4,352.81 |
| 124 | 1.5.4.1.1 | **[RFC04] Manter Avaliação de Serviço** |  | 2.44d | 2018-11-30 14:16 | 2018-12-04 17:47 |  | 2018-11-30 14:16 | 2018-12-04 17:47 | 2.44d |  |  |  |  | 16h | 2,400 | 2,400 |
| 125 | 1.5.4.1.1.1 | [RFS14] Cadastrar Avaliação de Serviço |  | 0.75d? | 2018-11-30 14:16 | 2018-12-03 10:16 | 121 | 2018-11-30 14:16 | 2018-12-03 10:16 | 0.75d? | 3.24d | 0d | start no earlier than 2018-09-14 09:00 | Kevin; Lucas; Rodrigo; Thiago | 6h | 900 | 900 |
| 126 | 1.5.4.1.1.2 | [RFS15] Alterar Avaliação de Serviço |  | 0.62d? | 2018-12-03 10:16 | 2018-12-03 17:16 | 125 | 2018-12-03 10:16 | 2018-12-03 17:16 | 0.62d? | 3.12d | 0d | start no earlier than 2018-09-14 09:00 | Kevin; Lucas; Rodrigo; Thiago | 5h | 750 | 750 |
| 127 | 1.5.4.1.1.3 | [RFS18] Remover Avaliação |  | 1.19d | 2018-12-03 17:16 | 2018-12-04 17:47 | 126 | 2018-12-03 17:16 | 2018-12-04 17:47 | 1.19d | 3.12d | 0d |  | Kevin; Lucas; Rodrigo; Thiago | 5h | 750 | 750 |
| 128 | 1.5.4.1.2 | **[RFC05] Manter Avaliação de Cliente** |  | 3d | 2018-12-04 17:47 | 2018-12-07 17:47 |  | 2018-12-04 17:47 | 2018-12-07 17:47 | 3d | 0d |  |  |  | 12h | 1,800 | 1,800 |
| 129 | 1.5.4.1.2.1 | [RFS16] Cadastrar Avaliação de Cliente | manual | 1d? | 2018-12-04 17:47 | 2018-12-05 17:47 | 127 | 2018-12-04 17:47 | 2018-12-05 17:47 | 1d? |  |  |  | Kevin; Lucas; Rodrigo; Thiago | 6h | 900 | 900 |
| 130 | 1.5.4.1.2.2 | [RFS17] Alterar Avaliação de Cliente | manual | 1d? | 2018-12-05 17:47 | 2018-12-06 17:47 | 129 | 2018-12-05 17:47 | 2018-12-06 17:47 | 1d? |  |  |  | Kevin; Lucas; Rodrigo; Thiago | 3h | 450 | 450 |
| 131 | 1.5.4.1.2.3 | [RFS18] Remover Avaliação | manual | 1d? | 2018-12-06 17:47 | 2018-12-07 17:47 | 130 | 2018-12-06 17:47 | 2018-12-07 17:47 | 1d? |  |  |  | Kevin; Lucas; Rodrigo; Thiago | 3h | 450 | 450 |
| 132 | 1.5.4.1.3 | [RFS31] Emitir Relatório de Taxa de Serviços Realizados |  | 1.34d | 2018-12-07 17:47 | 2018-12-11 11:31 | 131 | 2018-12-07 17:47 | 2018-12-11 11:31 | 1.34d | 3.12d | 0d | finish no earlier than 2018-12-10 18:00 | Kevin; Lucas; Rodrigo; Thiago | 1.02h | 152.81 | 152.81 |

| ID | WBS | Task | Type | Duration | Start | Finish | Predecessors | Baseline start | Baseline finish | Baseline duration | Total slack | Free slack | Constraint | Resources | Work | Cost | Baseline cost |
| --- | --- | --- | --- | --- | --- | --- | --- | --- | --- | --- | --- | --- | --- | --- | --- | --- | --- |
| 133 | 1.5.4.2 | **Teste Release 04** |  | 57.75d | 2018-09-28 10:54 | 2018-12-18 17:51 |  | 2018-09-28 10:54 | 2018-12-18 17:51 | 57.75d |  |  |  |  | 8h | 1,200 | 1,200 |
| 134 | 1.5.4.2.1 | **[RFC04] Manter Avaliação de Serviço** |  | 0.13d | 2018-12-10 18:00 | 2018-12-11 10:02 |  | 2018-12-10 18:00 | 2018-12-11 10:02 | 0.13d |  |  |  |  | 3h | 450 | 450 |
| 135 | 1.5.4.2.1.1 | [RFS14] Cadastrar Avaliação de Serviço |  | 0.04d? | 2018-12-11 11:31 | 2018-12-11 11:51 | 132 | 2018-12-11 11:31 | 2018-12-11 11:51 | 0.04d? | 3.24d | 0d |  | Kevin; Lucas; Rodrigo; Thiago | 1h | 150 | 150 |
| 136 | 1.5.4.2.1.2 | [RFS15] Alterar Avaliação de Serviço |  | 0.06d? | 2018-12-11 11:51 | 2018-12-11 14:10 | 135 | 2018-12-11 11:51 | 2018-12-11 14:10 | 0.06d? | 3.12d | 0d |  | Kevin; Lucas; Rodrigo; Thiago | 1h | 150 | 150 |
| 137 | 1.5.4.2.1.3 | [RFS18] Remover Avaliação |  | 0.04d? | 2018-12-11 14:10 | 2018-12-11 14:30 | 136 | 2018-12-11 14:10 | 2018-12-11 14:30 | 0.04d? | 3.12d |  |  | Lucas; Kevin; Rodrigo; Thiago | 1h | 150 | 150 |
| 138 | 1.5.4.2.2 | **[RFC05] Manter Avaliação de Cliente** |  | 2.04d? | 2018-12-14 15:30 | 2018-12-18 15:51 |  | 2018-12-14 15:30 | 2018-12-18 15:51 | 2.04d? | 0d |  |  |  | 3h | 450 | 450 |
| 139 | 1.5.4.2.2.1 | [RFS16] Cadastrar Avaliação de Cliente | manual | 0.04d | 2018-12-14 15:30 | 2018-12-14 15:51 | 137 | 2018-12-14 15:30 | 2018-12-14 15:51 | 0.04d |  |  |  | Lucas; Kevin; Rodrigo; Thiago | 1h | 150 | 150 |
| 140 | 1.5.4.2.2.2 | [RFS17] Alterar Avaliação de Cliente | manual | 1d? | 2018-12-14 15:51 | 2018-12-17 15:51 | 139 | 2018-12-14 15:51 | 2018-12-17 15:51 | 1d? |  |  |  | Kevin; Lucas; Rodrigo; Thiago | 1h | 150 | 150 |
| 141 | 1.5.4.2.2.3 | [RFS18] Remover Avaliação | manual | 1d? | 2018-12-17 15:51 | 2018-12-18 15:51 | 140 | 2018-12-17 15:51 | 2018-12-18 15:51 | 1d? |  |  |  | Kevin; Lucas; Rodrigo; Thiago | 1h | 150 | 150 |
| 142 | 1.5.4.2.3 | [RFS31] Emitir Relatório de Taxa de Serviços Realizados |  | 0.25d? | 2018-12-18 15:51 | 2018-12-18 17:51 | 141 | 2018-12-18 15:51 | 2018-12-18 17:51 | 0.25d? | 0d |  |  | Lucas; Kevin; Rodrigo; Thiago | 2h | 300 | 300 |
| 143 | 1.5.4.3 | Gerar Status Report | manual | 1d? | 2018-12-18 17:51 | 2018-12-19 17:51 | 142 | 2018-12-18 17:51 | 2018-12-19 17:51 | 1d? |  |  |  | Kevin; Lucas; Rodrigo; Thiago | 1h | 150 | 150 |
| 144 | 1.6 | **Monitoramento e Controle** |  | 57.68d | 2018-10-01 09:00 | 2018-12-19 15:25 |  | 2018-10-01 09:00 | 2018-12-19 15:25 | 57.68d |  |  |  |  | 5.57h | 1,671 | 1,671 |
| 145 | 1.6.1 | Acompanhar Projeto |  | 0.7d | 2018-12-18 17:51 | 2018-12-19 15:25 | 142 | 2018-12-18 17:51 | 2018-12-19 15:25 | 0.7d | 1.86d |  | start no earlier than 2018-10-01 09:00 | Adler | 5.57h | 1,671 | 1,671 |
| 146 | 1.7 | **Fechamento** |  | 59.53d | 2018-10-01 09:00 | 2018-12-21 14:16 |  | 2018-10-01 09:00 | 2018-12-21 14:16 | 59.53d |  |  |  |  | 17h | 2,550 | 2,550 |
| 147 | 1.7.1 | Realizar Revisão Total do Sistema |  | 0.68d? | 2018-12-19 17:51 | 2018-12-20 14:16 | 143 | 2018-12-19 17:51 | 2018-12-20 14:16 | 0.68d? | 0d |  | start no earlier than 2018-10-01 09:00 | Kevin; Lucas; Rodrigo; Thiago | 15h | 2,250 | 2,250 |
| 148 | 1.7.2 | Gerar Status Report | manual | 1d? | 2018-12-20 14:16 | 2018-12-21 14:16 | 147 | 2018-12-20 14:16 | 2018-12-21 14:16 | 1d? |  |  |  | Kevin; Lucas; Rodrigo; Thiago | 2h | 300 | 300 |
| 149 | 1.8 | **Controle de Mudanças** |  | 58.99d | 2018-10-01 09:00 | 2018-12-20 17:55 |  | 2018-10-01 09:00 | 2018-12-20 17:55 | 58.99d |  |  |  |  | 8.9h | 1,335 | 1,335 |
| 150 | 1.8.1 | Elaboração Documentação necessária para mudanças |  | 0.25d? | 2018-12-20 14:16 | 2018-12-20 16:16 | 147 | 2018-12-20 14:16 | 2018-12-20 16:16 | 0.25d? | 0.42d | 0d | finish no earlier than 2018-10-04 18:00 | Kevin; Lucas; Rodrigo | 6h | 900 | 900 |
| 151 | 1.8.2 | Revisar Documentação |  | 0.21d? | 2018-12-20 16:16 | 2018-12-20 17:55 | 150 | 2018-12-20 16:16 | 2018-12-20 17:55 | 0.21d? | 0.42d |  | finish no earlier than 2018-10-04 18:00 | Rodrigo; Lucas; Kevin | 2.9h | 435 | 435 |
