Schedule from MS Project, 2017-04-19 to 2018-10-25, costs in R$, A marks actual dates.

## Calendars

- Padrão: Mon-Fri 09:00-12:00, 13:00-18:00; Sat-Sun off.

## Resources

| Resource | Rate |
| --- | --- |
| Kevin | 150 |
| Rodrigo | 150 |
| Cliente |  |
| Gp Externo | 200 |
| Mm |  |
| Adler | 300 |
| Lucas | 150 |
| Thiago | 150 |

## Schedule

| ID | WBS | Task | Type | Duration | Start | Finish | Predecessors | Complete | Remaining | Actual start | Baseline start | Baseline finish | Baseline duration | Total slack | Resources | Work | Actual work | Cost | Baseline cost | Actual cost |
| --- | --- | --- | --- | --- | --- | --- | --- | --- | --- | --- | --- | --- | --- | --- | --- | --- | --- | --- | --- | --- |
| 1 | 1 | **Sistema de Integração de Serviços** |  | 39d? | 2018-09-03 09:00 | 2018-10-25 18:00 |  | 43% | 22.4d? | 2017-04-19 09:00 | 2017-05-15 09:00 | 2017-06-21 18:00 | 28d |  |  | 181.96h | 117.82h | 27,103.53 | 40,430 | 17,723.13 |
| 2 | 1.1 | **Prospecção** |  | 340.12d | 2017-05-15 09:00 A | 2018-09-03 10:00 |  | 91% | 29.45d |  | 2017-05-15 09:00 | 2017-05-17 13:33 | 2.44d | 38.88d |  | 8.4h | 7.4h | 1,130 | 1,955 | 980 |
| 3 | 1.1.1 | **PTEC** |  | 1.09d | 2017-05-15 09:00 A | 2017-05-16 09:45 A |  | 100% |  |  | 2017-05-15 09:00 | 2017-05-16 13:45 | 1.47d |  |  | 4h | 4h | 600 | 1,500 | 600 |
| 4 | 1.1.1.1 | Estudar Dominio de Aplicação |  | 0.12d | 2017-05-15 09:00 A | 2017-05-15 10:00 A |  | 100% |  |  | 2017-05-15 09:00 | 2017-05-15 11:00 | 0.25d |  | Kevin | 1h | 1h | 150 | 300 | 150 |
| 5 | 1.1.1.2 | Reunir-se com o fornecedor de requisitos | milestone | 0d | 2017-05-15 10:00 A | 2017-05-15 10:00 A | 4 | 100% |  |  | 2017-05-15 11:00 | 2017-05-15 12:00 | 0.12d |  | Lucas |  |  |  | 150 |  |
| 6 | 1.1.1.3 | Redigir PTEC |  | 0.25d | 2017-05-15 10:00 A | 2017-05-15 12:00 A | 5 | 100% |  |  | 2017-05-15 13:00 | 2017-05-16 10:00 | 0.75d |  | Thiago | 2h | 2h | 300 | 900 | 300 |
| 7 | 1.1.1.4 | Revisar proposta Tecnica |  | 0.34d | 2017-05-15 16:00 A | 2017-05-16 09:45 A | 6 | 100% |  |  | 2017-05-16 10:00 | 2017-05-16 13:45 | 0.34d |  | Rodrigo | 1h | 1h | 150 | 150 | 150 |
| 8 | 1.1.1.5 | Aprovar PTEC | milestone | 0d | 2017-05-16 09:45 A | 2017-05-16 09:45 A | 7 | 100% |  |  | 2017-05-16 13:45 | 2017-05-16 13:45 | 0d |  | Cliente |  |  |  |  |  |
| 9 | 1.1.2 | **Es. Prel. Tam.** |  | 0.35d | 2017-05-16 09:45 A | 2017-05-16 13:33 A |  | 100% |  |  | 2017-05-16 13:45 | 2017-05-16 16:33 | 0.35d |  |  | 1.4h | 1.4h | 80 | 230 | 80 |
| 10 | 1.1.2.1 | Estimar tamanho do projeto |  | 0.12d | 2017-05-16 09:45 A | 2017-05-16 10:45 A | 7 | 100% |  |  | 2017-05-16 13:45 | 2017-05-16 14:45 | 0.12d |  | Thiago | 1h | 1h |  | 150 |  |
| 11 | 1.1.2.2 | Revisar estimativa de tamanho do projeto |  | 0.23d | 2017-05-16 10:45 A | 2017-05-16 13:33 A | 10 | 100% |  |  | 2017-05-16 14:45 | 2017-05-16 16:33 | 0.23d |  | Gp Externo | 0.4h | 0.4h | 80 | 80 | 80 |
| 12 | 1.1.3 | **Es. Prel. Cronograma e orçamento.** |  | 338.68d | 2017-05-16 13:33 A | 2018-09-03 10:00 |  | 67% | 112.89d |  | 2017-05-16 16:33 | 2017-05-17 13:33 | 0.62d | 38.88d |  | 3h | 2h | 450 | 225 | 300 |
| 13 | 1.1.3.1 | Elaborar Cronograma e orçamento preliminares |  | 0.25d | 2017-05-16 13:33 A | 2018-09-03 10:00 | 9 | 50% | 0.12d |  | 2017-05-16 16:33 | 2017-05-17 11:33 | 0.5d | 38.88d | Kevin | 2h | 1h | 300 | 75 | 150 |
| 14 | 1.1.3.2 | Revisar Cronograma e orçamento preliminares |  | 0.12d | 2017-05-16 15:57 A | 2017-05-16 16:57 A | 13, 10 | 100% |  |  | 2017-05-17 11:33 | 2017-05-17 13:33 | 0.12d |  | Lucas | 1h | 1h | 150 | 150 | 150 |
| 15 | 1.2 | **Análise** |  | 338.44d | 2017-05-17 09:33 A | 2018-09-03 14:05 |  | 68% | 107.43d |  | 2017-05-17 13:33 | 2017-05-18 17:22 | 1.48d | 38.49d |  | 30h | 20.95h | 4,500.02 | 6,900 | 3,142.62 |
| 16 | 1.2.1 | **Documento de requisitos** |  | 338.44d | 2017-05-17 09:33 A | 2018-09-03 14:05 |  | 59% | 139.7d |  | 2017-05-17 13:33 | 2017-05-18 11:49 | 0.91d | 38.49d |  | 20h | 11.83h | 2,999.97 | 4,350 | 1,774.57 |
| 17 | 1.2.1.1 | Reunir-se com o cliente |  | 0.17d | 2017-05-17 09:33 A | 2018-09-03 09:32 | 14 | 60% | 0.07d |  | 2017-05-17 13:33 | 2017-05-17 15:36 | 0.26d | 0d | Rodrigo; Kevin; Lucas | 4h | 2.4h | 600 | 1,200 | 360 |
| 18 | 1.2.1.2 | Elaborar DRE |  | 0.5d | 2017-05-17 11:09 A | 2018-09-03 11:32 | 17 | 50% | 0.25d |  | 2017-05-17 15:36 | 2017-05-17 17:36 | 0.25d | 0d | Lucas; Kevin; Rodrigo | 10h | 5h | 1,500 | 1,500 | 750 |
| 19 | 1.2.1.3 | Revisar DRE |  | 0.25d | 2017-05-17 15:09 A | 2018-09-03 11:59 | 18 | 78% | 0.06d |  | 2017-05-17 17:36 | 2017-05-18 10:09 | 0.32d | 0d | Rodrigo; Kevin | 4h | 3.1h | 600 | 900 | 465.07 |
| 20 | 1.2.1.4 | Submeter DRE para aprovação do cliente |  | 0.15d | 2017-05-17 16:42 A | 2018-09-03 14:05 | 19 | 55% | 0.07d |  | 2017-05-18 10:09 | 2017-05-18 11:49 | 0.21d | 38.49d | Kevin; Lucas; Thiago | 2h | 1.33h | 299.97 | 750 | 199.5 |
| 21 | 1.2.2 | **Matriz de rastreabilidade Bidirecional** |  | 337d | 2017-05-18 09:22 A | 2018-09-03 09:24 |  | 89% | 35.63d |  | 2017-05-18 11:49 | 2017-05-18 17:22 | 0.57d | 38.95d |  | 10h | 9.12h | 1,500.04 | 2,550 | 1,368.04 |
| 22 | 1.2.2.1 | Elaborar MRB |  | 0.25d | 2017-05-18 09:22 A | 2017-05-18 11:22 A | 20 | 100% |  |  | 2017-05-18 11:49 | 2017-05-18 15:58 | 0.39d |  | Kevin; Lucas; Rodrigo | 6h | 6h | 900.04 | 1,500 | 900.04 |
| 23 | 1.2.2.2 | Revisar MRB |  | 0.23d | 2017-05-18 11:59 A | 2018-09-03 09:24 | 22 | 78% | 0.05d |  | 2017-05-18 15:58 | 2017-05-18 17:22 | 0.17d | 38.95d | Rodrigo; Kevin; Lucas | 4h | 3.12h | 600 | 1,050 | 468 |
| 24 | 1.3 | **Projeto** |  | 336.53d? | 2017-05-18 14:11 A | 2018-09-03 09:24 |  | 82% | 61.65d? |  | 2017-05-18 17:22 | 2017-05-19 11:08 | 0.35d? | 38.95d |  | 7.32h | 5.72h | 1,337.5 | 1,410 | 1,037.5 |
| 25 | 1.3.1 | **Diagrama de Classes** |  | 0.18d? | 2017-05-18 14:11 A | 2017-05-18 15:39 A |  | 100% |  |  | 2017-05-18 17:22 | 2017-05-19 10:00 | 0.2d? |  |  | 2.98h | 2.98h | 537.5 | 780 | 537.5 |
| 26 | 1.3.1.1 | Elaborar Diagrama de Classes |  | 0.07d? | 2017-05-18 14:11 A | 2017-05-18 14:47 A | 23 | 100% |  |  | 2017-05-18 17:22 | 2017-05-19 09:10 | 0.12d? |  | Lucas; Adler; Kevin; Rodrigo | 2.4h | 2.4h | 450 | 480 | 450 |
| 27 | 1.3.1.2 | Revisar Diagrama de Classes |  | 0.03d? | 2017-05-18 14:59 A | 2017-05-18 15:14 A | 26 | 100% |  |  | 2017-05-19 09:10 | 2017-05-19 09:40 | 0.06d? |  | Kevin; Thiago | 0.25h | 0.25h | 37.5 | 150 | 37.5 |
| 28 | 1.3.1.3 | Atualizar MRB |  | 0.02d? | 2017-05-18 15:29 A | 2017-05-18 15:39 A | 27 | 100% |  |  | 2017-05-19 09:40 | 2017-05-19 10:00 | 0.04d? |  | Lucas; Rodrigo | 0.33h | 0.33h | 50 | 150 | 50 |

| ID | WBS | Task | Type | Duration | Start | Finish | Predecessors | Complete | Remaining | Actual finish | Baseline start | Baseline finish | Baseline duration | Total slack | Resources | Work | Actual work | Cost | Baseline cost | Actual cost |
| --- | --- | --- | --- | --- | --- | --- | --- | --- | --- | --- | --- | --- | --- | --- | --- | --- | --- | --- | --- | --- |
| 29 | 1.3.2 | **Modelo Entidade Relacionamento** |  | 336.34d? | 2017-05-18 15:39 A | 2018-09-03 09:24 |  | 66% | 115.32d? |  | 2017-05-19 10:00 | 2017-05-19 11:08 | 0.14d? | 38.95d |  | 4.33h | 2.73h | 800 | 630 | 500 |
| 30 | 1.3.2.1 | Elaborar MER |  | 0.12d? | 2017-05-18 15:39 A | 2018-09-03 09:24 | 28 | 60% | 0.05d? |  | 2017-05-19 10:00 | 2017-05-19 10:48 | 0.1d? | 38.95d | Rodrigo; Lucas; Adler; Kevin | 4h | 2.4h | 750 | 480 | 450 |
| 31 | 1.3.2.2 | Revisar MER |  | 0.02d? | 2017-05-18 16:03 A | 2017-05-18 16:16 A | 30 | 100% |  |  | 2017-05-19 10:48 | 2017-05-19 11:08 | 0.04d? |  | Lucas; Rodrigo | 0.33h | 0.33h | 50 | 150 | 50 |
| 32 | 1.4 | **Planejamento** |  | 336.09d? | 2017-05-19 09:09 A | 2018-09-03 09:52 |  | 72% | 95.41d? |  | 2017-05-19 11:08 | 2017-05-19 17:26 | 0.66d? | 38.89d |  | 12.17h | 9.1h | 1,825 | 2,700 | 1,365 |
| 33 | 1.4.1 | **Estimativa de Tamanho Definitivo** |  | 336.09d? | 2017-05-19 09:09 A | 2018-09-03 09:52 |  | 57% | 145.64d? |  | 2017-05-19 11:08 | 2017-05-19 14:48 | 0.33d? | 38.89d |  | 4h | 2.73h | 600 | 1,050 | 410 |
| 34 | 1.4.1.1 | Elaborar Estimativa de Tamanho Definitiva |  | 0.12d? | 2017-05-19 09:09 A | 2018-09-03 09:12 | 31 | 80% | 0.03d? |  | 2017-05-19 11:08 | 2017-05-19 14:08 | 0.14d? | 0d | Kevin; Lucas; Rodrigo | 3h | 2.4h | 450 | 750 | 360 |
| 35 | 1.4.1.2 | Revisar Estimativa de Tamanho Definitiva |  | 0.12d? | 2017-05-19 10:09 A | 2018-09-03 09:52 | 34 | 33% | 0.08d? |  | 2017-05-19 14:08 | 2017-05-19 14:48 | 0.08d? | 38.89d | Lucas | 1h | 0.33h | 150 | 300 | 50 |
| 36 | 1.4.2 | **Cronograma Definitivo** |  | 0.4d? | 2017-05-19 10:49 A | 2017-05-19 15:01 A |  | 100% |  |  | 2017-05-19 14:48 | 2017-05-19 16:30 | 0.21d? |  |  | 5h | 5h | 750 | 1,050 | 750 |
| 37 | 1.4.2.1 | Elabora Cronograma Definitivo |  | 0.12d? | 2017-05-19 10:49 A | 2017-05-19 11:49 A | 35 | 100% |  |  | 2017-05-19 14:48 | 2017-05-19 16:00 | 0.15d? |  | Kevin; Lucas; Rodrigo | 3h | 3h | 450 | 900 | 450 |
| 38 | 1.4.2.2 | Revisar Cronograma Definitivo |  | 0.12d? | 2017-05-19 14:01 A | 2017-05-19 15:01 A | 37 | 100% |  |  | 2017-05-19 16:00 | 2017-05-19 16:30 | 0.06d? |  | Kevin; Rodrigo | 2h | 2h | 300 | 150 | 300 |
| 39 | 1.4.3 | **Estimativa de Custo Definitiva** |  | 335.45d? | 2017-05-19 15:01 A | 2018-09-03 09:36 |  | 49% | 172.52d? |  | 2017-05-19 16:30 | 2017-05-19 17:26 | 0.12d? | 38.92d |  | 3.17h | 1.37h | 475 | 600 | 205 |
| 40 | 1.4.3.1 | Elaborar Estimativa de Custo Definitiva |  | 0.12d? | 2017-05-19 15:01 A | 2018-09-03 09:36 | 38 | 40% | 0.07d? |  | 2017-05-19 16:30 | 2017-05-19 17:06 | 0.07d? | 38.92d | Kevin; Lucas; Rodrigo | 3h | 1.2h | 450 | 450 | 180 |
| 41 | 1.4.3.2 | Revisar Estimativa de Custo Definitiva |  | 0.02d? | 2017-05-19 15:37 A | 2017-05-19 15:47 A | 40 | 100% |  |  | 2017-05-19 17:06 | 2017-05-19 17:26 | 0.04d? |  | Lucas; Thiago | 0.17h | 0.17h | 25 | 150 | 25 |
| 42 | 1.4.3.3 | Submeter Estimativa de Custo e Tamanho para aprovação do cliente | milestone | 0d? | 2017-05-19 15:57 A | 2017-05-19 15:57 A | 41 | 100% |  |  | 2017-05-19 17:26 | 2017-05-19 17:26 | 0d? |  | Kevin; Thiago |  |  |  |  |  |
| 43 | 1.5 | **Implementação** |  | 15.85d? | 2017-05-19 15:27 A | 2017-06-12 14:17 |  | 25% | 11.89d? |  | 2017-05-19 17:26 | 2017-06-12 18:00 | 16.07d | 358.46d |  | 102.07h | 53.91h | 14,411.01 | 23,250 | 7,487.01 |
| 44 | 1.5.1 | **Release 01** |  | 1.32d | 2017-05-19 15:27 A | 2017-05-22 18:00 |  | 100% |  | 2017-05-22 09:39 | 2017-05-19 17:26 | 2017-05-22 16:02 | 0.82d |  |  | 12.73h | 12.73h | 1,909 | 4,200 | 1,909 |
| 45 | 1.5.1.1 | **Implementação** |  | 0.4d? | 2017-05-19 15:27 A | 2017-05-22 09:39 A |  | 100% |  |  | 2017-05-19 17:26 | 2017-05-22 16:02 | 0.82d |  |  | 12.73h | 12.73h | 1,909 | 4,200 | 1,909 |
| 46 | 1.5.1.1.1 | **[RFC01] Manter Usuário** |  | 0.4d? | 2017-05-19 15:27 A | 2017-05-22 09:39 A |  | 100% |  |  | 2017-05-19 17:26 | 2017-05-22 11:14 | 0.47d |  |  | 12.73h | 12.73h | 1,909 | 2,100 | 1,909 |
| 47 | 1.5.1.1.1.1 | [RFS01] Cadastrar Usuário |  | 0.43d? | 2017-05-19 15:27 A | 2017-05-22 09:27 A | 42 | 100% |  |  |  |  |  |  | Kevin; Lucas; Rodrigo; Thiago | 9h | 9h | 1,350 |  | 1,350 |
| 48 | 1.5.1.1.1.2 | [RFS02] Alterar Dados do Perfil de Cliente |  | 0.05d? | 2017-05-19 16:15 A | 2017-05-19 16:39 A | 47 | 100% |  |  |  |  |  |  | Kevin; Lucas; Rodrigo; Thiago | 1.2h | 1.2h | 180 |  | 180 |
| 49 | 1.5.1.1.1.3 | [RFS03] Requisição de perfil profissional |  | 0.05d? | 2017-05-19 17:03 A | 2017-05-19 17:27 A | 48 | 100% |  |  |  |  |  |  | Kevin; Lucas; Rodrigo; Thiago | 1.2h | 1.2h | 180 |  | 180 |
| 50 | 1.5.1.1.1.4 | [RFS04] Lista de requisições para perfil profissional |  | 0.06d? | 2017-05-19 17:51 A | 2017-05-22 08:19 A | 49 | 100% |  |  |  |  |  |  | Rodrigo; Kevin; Lucas; Thiago | 0.73h | 0.73h | 109 |  | 109 |
| 51 | 1.5.1.1.1.5 | [RFS05] Análise de requisição de perfil profissional |  | 0.03d? | 2017-05-22 09:27 A | 2017-05-22 09:39 A | 50 | 100% |  |  |  |  |  |  | Kevin; Lucas; Rodrigo; Thiago | 0.6h | 0.6h | 90 |  | 90 |
| 52 | 1.5.2 | **Teste Release 01** |  | 5.63d? | 2017-05-22 11:58 A | 2017-05-29 18:00 |  | 100% |  | 2017-05-23 10:46 | 2017-05-22 16:02 | 2017-05-23 09:12 | 0.27d |  |  | 11.35h | 11.35h | 1,702.01 | 1,200 | 1,702.01 |
| 53 | 1.5.2.1 | **[RFC01] Manter Usuário** |  | 5.63d? | 2017-05-22 11:58 A | 2017-05-29 18:00 |  | 100% |  | 2017-05-23 10:46 |  |  |  |  |  | 11.35h | 11.35h | 1,702.01 |  | 1,702.01 |
| 54 | 1.5.2.1.1 | [RFS01] Cadastrar Usuário |  | 0.02d? | 2017-05-22 11:58 A | 2017-05-22 14:03 A |  | 100% |  |  |  |  |  |  | Kevin; Lucas; Rodrigo; Thiago | 0.29h | 0.29h | 44.23 |  | 44.23 |
| 55 | 1.5.2.1.2 | [RFS02] Alterar Dados do Perfil de Cliente |  | 0.01d? | 2017-05-22 14:03 A | 2017-05-22 14:09 A | 54 | 100% |  |  |  |  |  |  | Kevin; Lucas; Rodrigo; Thiago | 0.29h | 0.29h | 44.23 |  | 44.23 |
| 56 | 1.5.2.1.3 | [RFS03] Requisição de perfil profissional |  | 0.01d? | 2017-05-22 14:09 A | 2017-05-22 14:15 A | 55 | 100% |  |  |  |  |  |  | Rodrigo; Kevin; Lucas; Thiago | 0.29h | 0.29h | 44.23 |  | 44.23 |
| 57 | 1.5.2.1.4 | [RFS04] Lista de requisições para perfil profissional |  | 0.01d? | 2017-05-22 14:15 A | 2017-05-22 14:22 A | 56 | 100% |  |  |  |  |  |  | Kevin; Lucas; Rodrigo; Thiago | 0.29h | 0.29h | 44.23 |  | 44.23 |

| ID | WBS | Task | Type | Duration | Start | Finish | Predecessors | Complete | Remaining | Actual finish | Baseline start | Baseline finish | Baseline duration | Total slack | Resources | Work | Actual work | Cost | Baseline cost | Actual cost |
| --- | --- | --- | --- | --- | --- | --- | --- | --- | --- | --- | --- | --- | --- | --- | --- | --- | --- | --- | --- | --- |
| 58 | 1.5.2.1.5 | **[RFS05] Análise de requisição de perfil profissional** |  | 5.42d | 2017-05-22 14:40 A | 2017-05-29 18:00 |  | 100% |  | 2017-05-23 10:46 | 2017-05-23 09:12 | 2017-05-23 16:48 | 0.82d |  |  | 10.17h | 10.17h | 1,525.09 | 4,200 | 1,525.09 |
| 59 | 1.5.2.1.5.1 | **Implementação** |  | 0.64d? | 2017-05-22 14:40 A | 2017-05-23 10:46 A |  | 100% |  |  | 2017-05-23 09:12 | 2017-05-23 16:48 | 0.82d |  |  | 10.17h | 10.17h | 1,525.09 | 4,200 | 1,525.09 |
| 60 | 1.5.2.1.5.1.1 | **[RFC03] Manter Candidatos** |  | 0.23d? | 2017-05-22 14:40 A | 2017-05-22 16:29 A |  | 100% |  |  | 2017-05-23 09:12 | 2017-05-23 13:23 | 0.4d |  |  | 4.86h | 4.86h | 728.9 | 2,100 | 728.9 |
| 61 | 1.5.2.1.5.1.1.1 | [RFS09] Cadastrar Candidatos |  | 0.16d? | 2017-05-22 14:40 A | 2017-05-22 15:55 A |  | 100% |  |  |  |  |  |  | Rodrigo; Lucas | 2.5h | 2.5h | 375 |  | 375 |
| 62 | 1.5.2.1.5.1.1.2 | [RFS10] Visualizar Candidatos |  | 0.05d? | 2017-05-22 15:40 A | 2017-05-22 16:05 A | 61 | 100% |  |  |  |  |  |  | Kevin; Lucas; Rodrigo | 1.18h | 1.18h | 176.95 |  | 176.95 |
| 63 | 1.5.2.1.5.1.1.3 | [RFS11] Alterar Candidatos |  | 0.03d? | 2017-05-22 16:05 A | 2017-05-22 16:17 A | 62 | 100% |  |  |  |  |  |  | Kevin; Lucas; Rodrigo | 0.59h | 0.59h | 88.47 |  | 88.47 |
| 64 | 1.5.2.1.5.1.1.4 | [RFS12] Alterar Estatus do Candidato |  | 0.03d? | 2017-05-22 16:17 A | 2017-05-22 16:29 A | 63 | 100% |  |  |  |  |  |  | Rodrigo; Lucas; Kevin | 0.59h | 0.59h | 88.47 |  | 88.47 |
| 65 | 1.5.2.1.5.1.2 | **[RFC04] Manter Curriculum** |  | 0.2d? | 2017-05-23 09:08 A | 2017-05-23 10:46 A |  | 100% |  |  | 2017-05-23 13:23 | 2017-05-23 16:48 | 0.43d |  |  | 5.31h | 5.31h | 796.19 | 2,100 | 796.19 |
| 66 | 1.5.2.1.5.1.2.1 | [RFS21] Cadastrar Curriculum |  | 0.13d? | 2017-05-23 09:08 A | 2017-05-23 10:09 A | 64 | 100% |  |  |  |  |  |  | Lucas; Kevin; Rodrigo | 2.95h | 2.95h | 442.33 |  | 442.33 |
| 67 | 1.5.2.1.5.1.2.2 | [RFS22] Visualizar Curriculum |  | 0.05d? | 2017-05-23 09:57 A | 2017-05-23 10:22 A | 66 | 100% |  |  |  |  |  |  | Lucas; Kevin; Rodrigo | 1.18h | 1.18h | 176.93 |  | 176.93 |
| 68 | 1.5.2.1.5.1.2.3 | [RFS23] Alterar Curriculum |  | 0.03d? | 2017-05-23 10:22 A | 2017-05-23 10:34 A | 67 | 100% |  |  |  |  |  |  | Lucas; Kevin; Rodrigo | 0.59h | 0.59h | 88.47 |  | 88.47 |
| 69 | 1.5.2.1.5.1.2.4 | [RFS24] Inativar Curriculum |  | 0.03d? | 2017-05-23 10:34 A | 2017-05-23 10:46 A | 68 | 100% |  |  |  |  |  |  | Lucas; Kevin; Rodrigo | 0.59h | 0.59h | 88.47 |  | 88.47 |
| 70 | 1.5.3 | **Release 02** |  | 0.12d | 2017-05-19 15:27 | 2017-05-19 16:27 |  |  |  |  |  |  |  | 0d |  | 12h |  | 1,800 |  |  |
| 71 | 1.5.3.1 | **[RFC02] Manter Serviço Prestados no Calendário** |  | 0.12d | 2017-05-19 15:27 | 2017-05-19 16:27 |  |  |  |  |  |  |  | 0d |  | 12h |  | 1,800 |  |  |
| 72 | 1.5.3.1.1 | [RFS06] Cadastrar Serviço Prestados no Calendário | manual | 0.12d? | 2017-05-19 15:27 | 2017-05-19 16:27 |  |  |  |  |  |  |  |  | Kevin; Lucas; Rodrigo; Thiago | 4h |  | 600 |  |  |
| 73 | 1.5.3.1.2 | [RFS07] Consultar Serviço Prestados no Calendário | manual | 0.09d | 2017-05-19 15:27 | 2017-05-19 16:12 |  |  |  |  |  |  |  |  | Kevin; Lucas; Rodrigo; Thiago | 3h |  | 450 |  |  |
| 74 | 1.5.3.1.3 | [RFS08] Alterar Cadastro de Serviço Prestados no Calendário | manual | 0.09d | 2017-05-19 15:27 | 2017-05-19 16:12 |  |  |  |  |  |  |  |  | Kevin; Lucas; Rodrigo; Thiago | 3h |  | 450 |  |  |
| 75 | 1.5.3.1.4 | [RFS09] Alterar Cadastro de Serviço no Calendário | manual | 0.06d | 2017-05-19 15:27 | 2017-05-19 15:57 |  |  |  |  |  |  |  |  | Kevin; Lucas; Rodrigo; Thiago | 2h |  | 300 |  |  |
| 76 | 1.5.4 | **Teste Release 02** |  | 2d | 2017-05-27 09:00 A | 2017-05-29 18:00 |  | 18% | 1.65d |  | 2017-05-23 16:48 | 2017-05-29 18:00 | 4.15d |  |  | 12h | 1.32h | 1,800 | 1,200 | 198 |
| 77 | 1.5.4.1 | **[RFC02] Manter Serviço Prestados no Calendário** |  | 0.59d? | 2017-05-27 09:00 A | 2017-05-29 14:42 |  | 18% | 0.48d? |  | 2017-05-23 16:48 | 2017-05-24 10:15 | 0.31d | 368.41d |  | 12h | 1.32h | 1,800 | 600 | 198 |
| 78 | 1.5.4.1.1 | [RFS06] Cadastrar Serviço Prestados no Calendário |  | 0.38d? | 2017-05-27 09:00 A | 2017-05-29 11:00 | 69 | 14% | 0.32d? |  |  |  |  | 0d | Kevin; Lucas; Rodrigo; Thiago | 6h | 0.42h | 900 |  | 63 |
| 79 | 1.5.4.1.2 | [RFS07] Consultar Serviço Prestados no Calendário |  | 0.1d? | 2017-05-27 09:00 A | 2017-05-29 11:34 | 78 | 26% | 0.07d? |  |  |  |  | 0d | Kevin; Lucas; Rodrigo; Thiago | 2h | 0.3h | 300 |  | 45 |
| 80 | 1.5.4.1.3 | [RFS08] Alterar Cadastro de Serviço Prestados no Calendário |  | 0.2d? | 2017-05-27 09:00 A | 2017-05-29 14:28 | 79 | 13% | 0.17d? |  |  |  |  | 0d | Rodrigo; Lucas; Kevin; Thiago | 3h | 0.3h | 450 |  | 45 |
| 81 | 1.5.4.1.4 | [RFS09] Alterar Cadastro de Serviço no Calendário |  | 0.05d? | 2017-05-27 09:00 A | 2017-05-29 14:42 | 80 | 46% | 0.03d? |  |  |  |  | 368.41d | Rodrigo; Lucas; Kevin; Thiago | 1h | 0.3h | 150 |  | 45 |

| ID | WBS | Task | Type | Duration | Start | Finish | Predecessors | Complete | Remaining | Actual start | Baseline start | Baseline finish | Baseline duration | Total slack | Free slack | Resources | Work | Actual work | Cost | Baseline cost | Actual cost |
| --- | --- | --- | --- | --- | --- | --- | --- | --- | --- | --- | --- | --- | --- | --- | --- | --- | --- | --- | --- | --- | --- |
| 82 | 1.5.5 | **Release 03** |  | 5d | 2017-05-30 09:00 A | 2017-06-05 18:00 |  | 64% | 1.8d |  | 2017-05-30 08:00 | 2017-05-30 17:36 | 0.95d |  |  |  | 12h | 7.8h | 1,800 | 4,950 | 1,170 |
| 83 | 1.5.5.1 | **Implementação** |  | 5d | 2017-05-30 09:00 A | 2017-06-04 18:00 |  | 64% | 1.8d |  | 2017-05-30 08:00 | 2017-05-30 17:36 | 0.95d |  |  |  | 12h | 7.8h | 1,800 | 4,950 | 1,170 |
| 84 | 1.5.5.1.1 | **[RFC03] Manter Serviço** |  | 0.23d? | 2017-05-30 09:00 A | 2017-05-30 10:48 |  | 64% | 0.08d? |  | 2017-05-30 08:00 | 2017-05-30 11:12 | 0.4d |  |  |  | 12h | 7.8h | 1,800 | 1,650 | 1,170 |
| 85 | 1.5.5.1.1.1 | [RFS10] Solicitar Serviço |  | 0.25d? | 2017-05-30 09:00 A | 2017-05-30 11:00 |  | 90% | 0.03d? |  |  |  |  | 0d |  | Rodrigo; Lucas; Kevin; Thiago | 6h | 5.4h | 900 |  | 810 |
| 86 | 1.5.5.1.1.2 | [RFS11] Alterar Serviço |  | 0.12d? | 2017-05-30 09:00 A | 2017-05-30 11:36 | 85 | 40% | 0.07d? |  |  |  |  | 0.05d | 0d | Kevin; Lucas; Rodrigo; Thiago | 3h | 1.2h | 450 |  | 180 |
| 87 | 1.5.5.1.1.3 | [RFS12] Pesquisar Serviço |  | 0.09d? | 2017-05-30 09:00 A | 2017-05-30 14:04 | 86 | 27% | 0.07d? |  |  |  |  | 0d |  | Lucas; Kevin; Rodrigo; Thiago | 2h | 0.6h | 300 |  | 90 |
| 88 | 1.5.5.1.1.4 | [RFS13] Cancelar Serviço |  | 0.04d? | 2017-05-30 09:00 A | 2017-05-30 14:12 | 87 | 60% | 0.02d? |  |  |  |  | 367.48d |  | Lucas; Kevin; Rodrigo; Thiago | 1h | 0.6h | 150 |  | 90 |
| 89 | 1.5.6 | **Teste Release 03** |  | 2d | 2017-06-04 09:00 A | 2017-06-05 18:00 |  | 28% | 1.44d |  | 2017-05-30 17:36 | 2017-06-05 18:00 | 4.05d |  |  |  | 12h | 2.36h | 1,800 | 1,800 | 354 |
| 90 | 1.5.6.1 | **[RFC03] Manter Serviço** |  | 2d | 2017-06-04 09:00 A | 2017-06-05 18:00 |  | 28% | 1.44d |  | 2017-05-30 17:36 | 2017-05-31 09:56 | 0.17d |  |  |  | 12h | 2.36h | 1,800 | 600 | 354 |
| 91 | 1.5.6.1.1 | [RFS10] Solicitar Serviço |  | 0.28d? | 2017-06-04 09:00 A | 2017-06-05 11:05 |  | 26% | 0.21d? |  |  |  |  | 0d |  | Rodrigo; Lucas; Kevin; Thiago | 6h | 1.18h | 900 |  | 177 |
| 92 | 1.5.6.1.2 | [RFS11] Alterar Serviço |  | 0.11d? | 2017-06-04 09:00 A | 2017-06-05 11:34 | 91 | 44% | 0.06d? |  |  |  |  | 0d |  | Kevin; Lucas; Rodrigo; Thiago | 2h | 0.59h | 300 |  | 88.5 |
| 93 | 1.5.6.1.3 | [RFS12] Pesquisar Serviço |  | 0.11d? | 2017-06-04 09:00 A | 2017-06-05 14:05 | 92 | 22% | 0.09d? |  |  |  |  | 0.07d | 0d | Lucas; Kevin; Rodrigo; Thiago | 2h | 0.29h | 300 |  | 44.25 |
| 94 | 1.5.6.1.4 | [RFS13] Cancelar Serviço |  | 0.1d? | 2017-06-04 09:00 A | 2017-06-05 14:41 | 93 | 24% | 0.07d? |  |  |  |  | 363.41d |  | Lucas; Kevin; Rodrigo; Thiago | 2h | 0.29h | 300 |  | 44.25 |
| 95 | 1.5.7 | **Release 04** |  | 5.5d | 2017-06-05 09:06 A | 2017-06-12 14:06 |  | 15% | 4.7d |  | 2017-06-06 08:00 | 2017-06-06 15:00 | 0.62d | 358.49d |  |  | 16h | 15h | 1,650 | 4,500 | 1,650 |
| 96 | 1.5.7.1 | **Implementação** |  | 1.51d? | 2017-06-10 09:00 | 2017-06-12 14:06 |  | 15% | 1.29d? | 2017-06-05 09:06 | 2017-06-06 08:00 | 2017-06-06 15:00 | 0.62d |  |  |  | 16h | 15h | 1,650 | 4,500 | 1,650 |
| 97 | 1.5.7.1.1 | **[RFC04] Manter Avaliação** |  | 5.1d? | 2017-06-05 09:12 A | 2017-06-12 10:00 |  | 50% | 2.56d? |  | 2017-06-06 08:00 | 2017-06-06 11:00 | 0.38d | 0d |  |  | 14h | 13h | 1,350 | 1,500 | 1,350 |
| 98 | 1.5.7.1.1.1 | [RFS14] Cadastrar Avaliação de Serviço |  | 0.62d? | 2017-06-05 09:12 A | 2017-06-12 10:00 A |  | 100% |  |  |  |  |  |  |  | Kevin; Lucas; Rodrigo; Thiago | 5h | 5h | 750 |  | 750 |
| 99 | 1.5.7.1.1.2 | [RFS15] Alterar Avaliação de Serviço |  | 0.12d? | 2017-06-05 14:12 A | 2017-06-05 15:12 A | 98 | 100% |  |  |  |  |  |  |  | Kevin; Lucas; Rodrigo; Thiago | 1h | 1h | 150 |  | 150 |
| 100 | 1.5.7.1.1.3 | [RFS16] Cadastrar Avaliação de Cliente |  | 0.15d? | 2017-06-05 17:12 A | 2017-06-06 09:12 A | 99 | 100% |  |  |  |  |  |  |  | Kevin; Lucas; Rodrigo; Thiago | 4h | 4h |  |  |  |
| 101 | 1.5.7.1.1.4 | [RFS17] Alterar Avaliação de Cliente |  | 0.09d? | 2017-06-06 11:12 A | 2017-06-06 11:57 A | 100 | 100% |  |  |  |  |  |  |  | Kevin; Lucas; Rodrigo; Thiago | 3h | 3h | 450 |  | 450 |
| 102 | 1.5.7.1.1.5 | [RFS18] Remover Avaliação | manual | 1d? | 2017-06-05 09:12 | 2017-06-06 09:12 |  |  |  |  |  |  |  |  |  |  | 1h |  |  |  |  |
| 103 | 1.5.7.1.2 | **[RFC05] Emitir Relatório de Taxa de Serviços Realizados** |  | 5.24d? | 2017-06-05 09:06 A | 2017-06-12 11:00 |  | 1% | 5.17d? |  | 2017-06-06 11:00 | 2017-06-06 15:00 | 0.38d | 358.75d |  |  | 2h | 2h | 300 | 1,500 | 300 |
| 104 | 1.5.7.1.2.1 | [RFC05] Emitir Relatório de Taxa de Serviços Realizados |  | 5.24d? | 2017-06-05 09:06 A | 2017-06-12 11:00 |  | 1% | 5.17d? |  | 2017-06-06 11:00 | 2017-06-06 15:00 | 0.38d | 358.75d |  | Kevin; Lucas; Rodrigo; Thiago | 2h | 2h | 300 | 1,500 | 300 |
| 105 | 1.5.8 | **Teste Release 04** |  | 0.5d? | 2017-06-12 09:00 | 2017-06-12 14:00 |  | 14% | 0.43d? | 2017-06-06 14:06 | 2017-06-06 15:00 | 2017-06-12 18:00 | 4.38d |  |  |  | 14h | 3.36h | 1,950 | 1,200 | 504 |
| 106 | 1.5.8.1 | **[RFC04] Manter Avaliação** |  | 3.76d? | 2017-06-06 16:12 A | 2017-06-12 14:17 |  | 7% | 3.51d? |  | 2017-06-06 15:00 | 2017-06-06 17:00 | 0.25d | 358.46d |  |  | 13h | 2.36h | 1,800 | 600 | 354 |
| 107 | 1.5.8.1.1 | [RFS14] Cadastrar Avaliação de Serviço |  | 0.26d? | 2017-06-06 16:12 A | 2017-06-12 10:52 |  | 10% | 0.23d? |  |  |  |  | 0d |  | Kevin; Lucas; Rodrigo; Thiago | 6h | 0.59h | 900 |  | 88.5 |
| 108 | 1.5.8.1.2 | [RFS15] Alterar Avaliação de Serviço |  | 0.13d? | 2017-06-06 16:24 A | 2017-06-12 11:43 | 107 | 20% | 0.1d? |  |  |  |  | 0d |  | Kevin; Lucas; Rodrigo; Thiago | 3h | 0.59h | 450 |  | 88.5 |
| 109 | 1.5.8.1.3 | [RFS16] Cadastrar Avaliação de Cliente |  | 0.11d? | 2017-06-06 16:36 A | 2017-06-12 14:08 | 108 | 24% | 0.08d? |  |  |  |  | 0.02d | 0d | Lucas; Kevin; Rodrigo; Thiago | 2h | 0.59h | 300 |  | 88.5 |
| 110 | 1.5.8.1.4 | [RFS17] Alterar Avaliação de Cliente |  | 0.04d? | 2017-06-06 16:49 A | 2017-06-12 14:17 | 109 | 59% | 0.02d? |  |  |  |  | 358.46d |  | Lucas; Kevin; Rodrigo; Thiago | 1h | 0.59h | 150 |  | 88.5 |
| 111 | 1.5.8.1.5 | [RFS18] Remover Avaliação | manual | 1d? | 2017-06-06 16:12 | 2017-06-07 16:12 |  |  |  |  |  |  |  |  |  |  | 1h |  |  |  |  |

| ID | WBS | Task | Duration | Start | Finish | Predecessors | Complete | Remaining | Actual start | Actual finish | Baseline start | Baseline finish | Baseline duration | Total slack | Constraint | Resources | Work | Actual work | Cost | Baseline cost | Actual cost |
| --- | --- | --- | --- | --- | --- | --- | --- | --- | --- | --- | --- | --- | --- | --- | --- | --- | --- | --- | --- | --- | --- |
| 112 | 1.5.8.2 | **[RFC05] Emitir Relatório de Taxa de Serviços Realizados** | 0.12d? | 2017-06-06 14:06 A | 2017-06-06 15:06 A |  | 100% |  |  |  | 2017-06-12 16:24 | 2017-06-12 18:00 | 0.2d |  |  |  | 1h | 1h | 150 | 600 | 150 |
| 113 | 1.5.8.2.1 | [RFC05] Emitir Relatório de Taxa de Serviços Realizados | 0.12d? | 2017-06-06 14:06 A | 2017-06-06 15:06 A |  | 100% |  |  |  |  |  |  |  |  | Lucas; Kevin; Rodrigo; Thiago | 1h | 1h | 150 |  | 150 |
| 114 | 1.6 | **Monitoramento e Controle** | 39d | 2017-04-19 09:00 A | 2017-06-12 18:00 |  | 100% |  |  | 2017-06-12 14:00 | 2017-05-15 09:00 | 2017-05-15 16:13 | 0.78d |  |  |  | 4h | 4h | 1,200 | 3,000 | 1,200 |
| 115 | 1.6.1 | Acompanhar Projeto | 0.5d | 2017-04-19 09:00 A | 2017-06-12 14:00 A |  | 100% |  |  |  | 2017-05-15 09:00 | 2017-05-15 16:13 | 0.78d |  | finish no earlier than 2017-06-12 18:00 | Adler | 4h | 4h | 1,200 | 3,000 | 1,200 |
| 116 | 1.7 | **Fechamento** | 0.6d? | 2017-06-12 09:00 | 2017-06-12 14:48 |  | 96% | 0.02d? | 2017-06-07 09:06 |  | 2017-06-13 08:00 | 2017-06-13 13:48 | 0.47d? |  |  |  | 12h | 11.4h | 1,800 | 3,200 | 1,710 |
| 117 | 1.7.1 | Realizar Revisão Total do Sistema | 0.61d? | 2017-06-07 09:06 A | 2017-06-12 09:12 | 112 | 96% | 0.03d? |  |  | 2017-06-13 08:00 | 2017-06-13 13:48 | 0.6d? | 0d |  | Kevin; Lucas; Rodrigo | 12h | 11.4h | 1,800 | 3,200 | 1,710 |
| 118 | 1.8 | **Controle de Mudanças** | 3.39d | 2017-06-07 14:54 A | 2017-06-12 18:00 |  | 88% | 0.41d |  |  | 2017-06-13 13:48 | 2017-06-13 16:10 | 0.3d? |  |  |  | 6h | 5.34h | 900 | 1,365 | 801 |
| 119 | 1.8.1 | Elaboração Documentação necessária para mudanças | 0.17d? | 2017-06-07 14:54 A | 2017-06-12 09:18 | 117 | 92% | 0.01d? |  |  | 2017-06-13 13:48 | 2017-06-13 15:13 | 0.18d? | 0d |  | Kevin; Lucas; Rodrigo | 4h | 3.66h | 600 | 915 | 549 |
| 120 | 1.8.2 | Revisar Documentação | 0.14d? | 2017-06-07 16:07 A | 2017-06-12 09:29 | 119 | 84% | 0.02d? |  |  | 2017-06-13 15:13 | 2017-06-13 16:10 | 0.12d? | 358.94d |  | Rodrigo; Lucas; Kevin | 2h | 1.68h | 300 | 450 | 252 |
